Schedule from MS Project, 2009-10-12 to 2011-02-18, costs in $.

## Calendars

- Standard: Mon-Fri 08:00-12:00, 13:00-17:00; Sat-Sun off.

## Resources

| Resource | Group | Unit | Rate |
| --- | --- | --- | --- |
| Architect | Consultant |  | 9 |
| Draftsperson | Staff |  | 7 |
| Building Clerk | Staff |  | 8 |
| Supervisor | Staff |  | 12 |
| Rigger | Wages |  | 5 |
| Boilermaker | Wages |  | 5 |
| Welder | Wages |  | 6 |
| Carpenter | Wages |  | 7 |
| Painter | Wages |  | 6 |
| Labourer | Wages |  | 6 |
| Driver | Wages |  | 8 |
| No Barrier Fencing | Contractor |  | 3 |
| Rock Solid Concrete | Contractor |  | 4 |
| Listen Ear Audio | Contractor |  | 5 |
| In Focus video | Contractor |  | 5 |
| Pure Grass Turf | Contractor |  | 5 |
| Building Inspector | Government |  | 5 |
| High Jib Crane | Equipment |  | 7 |
| Grader | Equipment |  | 6 |
| Air Compressor | Equipment |  | 7 |
| Utiliy | Equipment |  | 5 |
| Eletrician | Staff |  | 7 |
| Plumber | Staff |  | 5 |
| Asstro Turf | Material | Square Mattre | 12 |
| Paint | Ute | Ultre | 20 |

## Schedule

| ID | WBS | Task | Type | Duration | Start | Finish | Predecessors | Total slack | Free slack | Resources | Work | Cost |
| --- | --- | --- | --- | --- | --- | --- | --- | --- | --- | --- | --- | --- |
| 1 | 1 | **Planning** |  | 88d | 2009-10-12 | 2010-02-10 |  | 0d |  |  | 648h | 5,280 |
| 2 | 1.1 | Creating architectural plans |  | 12w | 2009-10-12 | 2010-01-01 |  | 0d |  | Architect; Building Clerk [25%]; Draftsperson [200%] | 360h | 2,880 |
| 3 | 1.2 | Submit pnlas for approval |  | 1mo | 2010-01-04 | 2010-01-29 | 2 | 0d |  | Architect | 160h | 1,440 |
| 4 | 1.3 | Order materials |  | 8d | 2010-02-01 | 2010-02-10 | 3 | 0d |  | Building Clerk; Draftsperson | 128h | 960 |
| 5 | 1.4 | Planning Completed | milestone | 0d | 2010-02-10 | 2010-02-10 | 2, 3, 4 | 0d |  |  |  |  |
| 6 | 2 | **Site Works** |  | 27d | 2010-02-11 | 2010-03-19 |  | 0d |  |  | 720h | 5,712 |
| 7 | 2.1 | Erect fencing |  | 3d | 2010-02-11 | 2010-02-15 | 5 | 0d |  | No Barrier Fencing | 24h | 72 |
| 8 | 2.2 | Erect site building |  | 4d | 2010-02-16 | 2010-02-19 | 7 | 0d |  | Carpenter [400%]; Labourer; Supervisor | 96h | 800 |
| 9 | 2.3 | Clear and level site |  | 3w | 2010-02-22 | 2010-03-12 | 8 | 0d |  | Driver [200%]; Grader [200%]; Supervisor | 360h | 3,120 |
| 10 | 2.4 | Prepare drainage infrastructure |  | 1w | 2010-03-15 | 2010-03-19 | 9 | 0d |  | Supervisor [50%]; Plumber [200%] | 100h | 640 |
| 11 | 2.5 | Preparecabling infrastructure |  | 1w | 2010-03-15 | 2010-03-19 | 9 | 0d |  | Supervisor [50%]; Eletrician [300%] | 140h | 1,080 |
| 12 | 2.6 | Site Works Completed | milestone | 0d | 2010-03-19 | 2010-03-19 | 7, 8, 9, 10, 11 | 0d |  |  |  |  |
| 13 | 3 | **Building Construction** |  | 190d? | 2010-03-22 | 2010-12-10 |  | 0d |  |  | 8832h | 60,128 |
| 14 | 3.1 | Pour foundations |  | 4d | 2010-03-22 | 2010-03-25 | 12 | 0d |  | Rock Solid Concrete | 32h | 128 |
| 15 | 3.2 | Erect steelwork |  | 6mo | 2010-03-26 | 2010-09-09 | 14 | 0d |  | Driver [200%]; Supervisor [50%]; Boilermaker [600%]; High Jib Crane; Labourer [600%]; Rigger [600%]; Utiliy; Welder [500%] | 3840h | 25,920 |
| 16 | 3.3 | Erect wall |  | 2mo | 2010-09-10 | 2010-11-04 | 15 | 0d |  | Supervisor [50%]; Carpenter [700%]; Labourer [400%]; Driver; Grader; Air Compressor; Eletrician [75%]; Plumber [25%] | 4960h | 34,080 |
| 17 | 3.4 | Install roofing superstructure |  | 2w | 2010-11-05 | 2010-11-18 | 16 | 0d |  |  |  |  |
| 18 | 3.5 | Install roofing retracting mechanism |  | 1w | 2010-11-19 | 2010-11-25 | 17 | 0d |  |  |  |  |
| 19 | 3.6 | Erec seating tiers |  | 3w | 2010-11-19 | 2010-12-09 | 18SS | 0d |  |  |  |  |
| 20 | 3.7 | Building Construction Completed |  | 1d? | 2010-12-10 | 2010-12-10 | 14, 15, 16, 17, 18, 19 | 0d |  |  |  |  |
| 21 | 4 | **Fit Out** |  | 36d? | 2010-12-13 | 2011-01-31 |  | 0d |  |  |  |  |
| 22 | 4.1 | Fit all windows and doors |  | 2w | 2010-12-13 | 2010-12-24 | 20 | 25d |  |  |  |  |
| 23 | 4.2 | Install electrical cabling |  | 1w | 2010-12-13 | 2010-12-17 | 20 | 20d | 0d |  |  |  |
| 24 | 4.3 | Install electrical fittings and fixtures |  | 2w | 2010-12-20 | 2010-12-31 | 23 | 20d |  |  |  |  |
| 25 | 4.4 | Install all plumbing |  | 2w | 2010-12-13 | 2010-12-24 | 20 | 20d | 0d |  |  |  |
| 26 | 4.5 | Install plumbing fixtures and fittings |  | 1w | 2010-12-27 | 2010-12-31 | 25 | 20d |  |  |  |  |
| 27 | 4.6 | Lay astro turf |  | 1w | 2010-12-13 | 2010-12-17 | 20 | 30d |  |  |  |  |
| 28 | 4.7 | Erect handrails and fencing |  | 2w | 2010-12-13 | 2010-12-24 | 20 | 0d |  |  |  |  |
| 29 | 4.8 | Paint rooms,fixtures,fittings,etc |  | 1mo | 2010-12-27 | 2011-01-21 | 28 | 0d |  |  |  |  |
| 30 | 4.9 | Install PA system |  | 2d | 2010-12-20 | 2010-12-21 | 23 | 23d |  |  |  |  |
| 31 | 4.10 | Install video imaging equipment |  | 3d | 2010-12-20 | 2010-12-22 | 23 | 22d |  |  |  |  |
| 32 | 4.11 | Fit out control room |  | 1w | 2011-01-24 | 2011-01-28 | 29, 30, 31 | 0d |  |  |  |  |
| 33 | 4.12 | Fit out Completed |  | 1d? | 2011-01-31 | 2011-01-31 | 22, 23, 24, 25, 26, 27, 28, 29, 30, 31, 32 | 0d |  |  |  |  |

| ID | WBS | Task | Type | Duration | Start | Finish | Predecessors | Total slack |
| --- | --- | --- | --- | --- | --- | --- | --- | --- |
| 34 | 5 | **Commissioning** |  | 14d | 2011-02-01 | 2011-02-18 |  | 0d |
| 35 | 5.1 | Test roof mechanism |  | 1w | 2011-02-01 | 2011-02-07 | 33 | 0d |
| 36 | 5.2 | Test PA system |  | 2d | 2011-02-01 | 2011-02-02 | 33 | 3d |
| 37 | 5.3 | Test video imaging equipment |  | 2d | 2011-02-01 | 2011-02-02 | 33 | 3d |
| 38 | 5.4 | Test control room equipment |  | 1w | 2011-02-08 | 2011-02-14 | 35, 36, 37 | 0d |
| 39 | 5.5 | Obtain official occupancy |  | 1d | 2011-02-15 | 2011-02-15 | 38 | 0d |
| 40 | 5.6 | Obtain safety certification |  | 2d | 2011-02-16 | 2011-02-17 | 39 | 0d |
| 41 | 5.7 | Official opening |  | 1d | 2011-02-18 | 2011-02-18 | 40 | 0d |
| 42 | 5.8 | Commissioning Completed | milestone | 0d | 2011-02-18 | 2011-02-18 | 35, 36, 37, 38, 39, 40, 41 | 0d |
