# Bai3Day3

Schedule from MS Project, 2023-11-01 to 2025-08-13, costs in $.

## Calendars

- Standard: Mon-Fri 08:00-12:00, 13:00-17:00; Sat-Sun off.

## Resources

| Resource | Group | Rate |
| --- | --- | --- |
| Architect | Consultant | 9 |
| Draftsperson | Staff | 7 |
| Bulding Clerk | Staff | 8 |
| Supetvisor | Staff | 12 |
| Rigger | Wages | 5 |
| Boilermaker | Wages | 5 |
| Welder | Wages | 6 |
| Carpenter | Wages | 7 |
| Painter | Wages | 6 |
| Lavourer | Wages | 6 |
| Driver | Wages | 8 |
| No Barrier Fencing | Contractor | 3 |
| Rock Solid Concrete | Contractor | 4 |
| Listen Ear Audio | Contractor | 5 |
| In Forcus Video | Contractor | 5 |
| Pite Grass Turf | Contractor | 5 |
| Building Inspector | Government | 5 |
| Hight Jib Crane | Equipment | 7 |
| Grader | Equipment | 6 |
| Air Compressor | Equipment | 7 |
| Utillity | Equipment | 5 |
| Electrician | Staff | 7 |
| Plumber | Staff | 5 |
| Asstro Turf | Material | 12 |
| Paint | Ute | 20 |

## Schedule

| ID | WBS | Task | Duration | Start | Finish | Predecessors | Baseline start | Baseline finish | Baseline duration | Total slack | Free slack | Resources | Work | Cost | Baseline cost |
| --- | --- | --- | --- | --- | --- | --- | --- | --- | --- | --- | --- | --- | --- | --- | --- |
| 1 | 1 | **Planning** | 44d? | 2023-11-01 | 2024-01-01 |  | 2023-11-01 | 2024-01-01 | 44d? | 0d |  |  | 648h | 5,280 | 5,280 |
| 2 | 1.1 | Creating architectural plans | 3w | 2023-11-01 | 2023-11-21 |  | 2023-11-01 | 2023-11-21 | 3w | 0d |  | Architect; Draftsperson [200%]; Bulding Clerk | 360h | 2,880 | 2,880 |
| 3 | 1.2 | Submiy plans for approval | 1mo | 2023-11-22 | 2023-12-19 | 2 | 2023-11-22 | 2023-12-19 | 1mo | 0d |  | Architect | 160h | 1,440 | 1,440 |
| 4 | 1.3 | Ordermaterial | 8d | 2023-12-20 | 2023-12-29 | 3 | 2023-12-20 | 2023-12-29 | 8d | 0d |  | Draftsperson; Bulding Clerk | 128h | 960 | 960 |
| 5 | 1.4 | Planning Computer | 1d? | 2024-01-01 | 2024-01-01 | 2, 3, 4 | 2024-01-01 | 2024-01-01 | 1d? | 0d |  |  |  |  |  |
| 6 | 2 | **Site** | 37d? | 2024-01-02 | 2024-02-21 |  | 2024-01-02 | 2024-02-21 | 37d? | 0d |  |  | 576h | 4,824 | 4,824 |
| 7 | 2.1 | Erect fencing | 3d | 2024-01-02 | 2024-01-04 | 5 | 2024-01-02 | 2024-01-04 | 3d | 0d |  | No Barrier Fencing | 24h | 72 | 72 |
| 8 | 2.2 | Erect site building | 4d | 2024-01-05 | 2024-01-10 | 7 | 2024-01-05 | 2024-01-10 | 4d | 0d |  | Carpenter [400%]; Supetvisor; Lavourer | 96h | 800 | 800 |
| 9 | 2.3 | Clear and levelsite | 3w | 2024-01-11 | 2024-01-31 | 8 | 2024-01-11 | 2024-01-31 | 3w | 0d |  | Supetvisor; Grader [200%]; Driver [200%] | 360h | 3,120 | 3,120 |
| 10 | 2.4 | Prepare drainage ỉnanstructure | 2w | 2024-02-01 | 2024-02-14 | 9 | 2024-02-01 | 2024-02-14 | 2w | 0d |  | Supetvisor [50%]; Plumber [200%] | 80h | 680 | 680 |
| 11 | 2.5 | prepare cabling ỉnanstructure | 2d? | 2024-02-01 | 2024-02-02 | 9 | 2024-02-01 | 2024-02-02 | 2d? | 8d |  | Supetvisor [50%]; Electrician [300%] | 16h | 152 | 152 |
| 12 | 2.6 | Site work computed | 1w | 2024-02-15 | 2024-02-21 | 7, 8, 9, 10, 11 | 2024-02-15 | 2024-02-21 | 1w | 0d |  |  |  |  |  |
| 13 | 3 | **Building Contrustion** | 335d? | 2024-02-22 | 2025-06-04 |  | 2024-02-22 | 2025-06-04 | 335d? | 0d |  |  | 10392h | 71,088 | 71,088 |
| 14 | 3.1 | Pour foundations | 4d | 2024-02-22 | 2024-02-27 | 12 | 2024-02-22 | 2024-02-27 | 4d | 0d |  | Rock Solid Concrete | 32h | 128 | 128 |
| 15 | 3.2 | Erect sreelwork | 6mo | 2024-02-28 | 2024-08-13 | 14 | 2024-02-28 | 2024-08-13 | 6mo | 0d |  | Supetvisor [50%]; Rigger [600%]; Boilermaker [600%]; Welder [500%]; Lavourer [600%]; Driver [200%]; Hight Jib Crane; Utillity | 5760h | 38,400 | 38,400 |
| 16 | 3.3 | Erect wall | 8mo | 2024-08-14 | 2025-03-25 | 15 | 2024-08-14 | 2025-03-25 | 8mo | 0d |  | Supetvisor [50%]; Carpenter [700%]; Lavourer [400%]; Driver; Grader; Air Compressor; Electrician [75%]; Plumber [25%] | 2560h | 18,560 | 18,560 |
| 17 | 3.4 | Install roofing superstructure | 4w | 2025-03-26 | 2025-04-22 | 16 | 2025-03-26 | 2025-04-22 | 4w | 0d |  | Supetvisor [50%]; Rigger [500%]; Boilermaker [500%]; Welder [300%]; Lavourer [500%]; Driver [200%]; Hight Jib Crane; Utillity; Air Compressor; Plumber [50%] | 800h | 5,280 | 5,280 |
| 18 | 3.5 | install roofing retracting superstructure | 2w | 2025-04-23 | 2025-05-06 | 17 | 2025-04-23 | 2025-05-06 | 2w | 0d |  | Welder; Supetvisor [50%]; Boilermaker [200%]; Rigger [200%]; Electrician [200%]; Driver; Hight Jib Crane | 280h | 2,000 | 2,000 |
| 19 | 3.6 | prepare cabling ỉnanstructure | 6w | 2025-04-23 | 2025-06-03 | 18SS | 2025-04-23 | 2025-06-03 | 6w | 0d |  | Supetvisor [50%]; Welder [200%]; Carpenter [800%]; Boilermaker [200%]; Lavourer [500%]; Driver; Utillity; Air Compressor | 960h | 6,720 | 6,720 |
| 20 | 3.7 | Building Contrustion Computed | 1d? | 2025-06-04 | 2025-06-04 | 14, 15, 16, 17, 18, 19 | 2025-06-04 | 2025-06-04 | 1d? | 0d |  |  |  |  |  |
| 21 | 4 | **Fit Out** | 15d? | 2025-06-05 | 2025-06-25 |  | 2025-06-05 | 2025-06-25 | 15d? | 0d |  |  | 1040h | 6,120 | 6,120 |
| 22 | 4.1 | Fit all windows and door | 1w | 2025-06-05 | 2025-06-11 | 20 | 2025-06-05 | 2025-06-11 | 1w | 9d |  | Carpenter [500%]; Lavourer [200%] | 160h | 1,040 | 1,040 |
| 23 | 4.2 | Insall electtric cabling | 0.5w | 2025-06-05 | 2025-06-09 | 20 | 2025-06-05 | 2025-06-09 | 0.5w | 3.5d | 0d | Lavourer [200%]; Electrician [300%] | 80h | 520 | 520 |
| 24 | 4.3 | Insall electtrical fitting and fixture | 0.67w | 2025-06-09 | 2025-06-12 | 23 | 2025-06-09 | 2025-06-12 | 0.67w | 8.17d |  | Electrician [300%] | 80h | 560 | 560 |
| 25 | 4.4 | Insall all plumbing | 1w | 2025-06-05 | 2025-06-11 | 20 | 2025-06-05 | 2025-06-11 | 1w | 6.5d | 0d | Plumber [200%]; Lavourer [200%] | 160h | 880 | 880 |
| 26 | 4.5 | Install plumping fixtures and fitting | 0.5w | 2025-06-12 | 2025-06-16 | 25 | 2025-06-12 | 2025-06-16 | 0.5w | 6.5d |  | Plumber [200%] | 40h | 200 | 200 |
| 27 | 4.6 | Lay as tro turf | 1w | 2025-06-05 | 2025-06-11 | 20 | 2025-06-05 | 2025-06-11 | 1w | 9d |  | Pite Grass Turf | 40h | 200 | 200 |
| 28 | 4.7 | Erect handrail and fencing | 1w | 2025-06-05 | 2025-06-11 | 20 | 2025-06-05 | 2025-06-11 | 1w | 0d |  | Welder [400%]; Boilermaker [200%] | 160h | 880 | 880 |
| 29 | 4.8 | Paint room fixture fitting etc | 0.2mo | 2025-06-12 | 2025-06-17 | 28 | 2025-06-12 | 2025-06-17 | 0.2mo | 0d |  | Painter [500%] | 160h | 960 | 960 |
| 30 | 4.9 | Insall Pa system | 2d | 2025-06-09 | 2025-06-11 | 23 | 2025-06-09 | 2025-06-11 | 2d | 4.5d |  | Listen Ear Audio | 16h | 80 | 80 |
| 31 | 4.10 | Insall video imaging equiment | 3d | 2025-06-09 | 2025-06-12 | 23 | 2025-06-09 | 2025-06-12 | 3d | 3.5d |  | In Forcus Video | 24h | 120 | 120 |
| 32 | 4.11 | Fit out controll room | 1w | 2025-06-18 | 2025-06-24 | 29, 30, 31 | 2025-06-18 | 2025-06-24 | 1w | 0d |  | Electrician [200%]; In Forcus Video; Listen Ear Audio | 120h | 680 | 680 |
| 33 | 4.12 | Fit out computed | 1d? | 2025-06-25 | 2025-06-25 | 22, 23, 24, 25, 26, 27, 28, 29, 30, 31, 32 | 2025-06-25 | 2025-06-25 | 1d? | 0d |  |  |  |  |  |

| ID | WBS | Task | Duration | Start | Finish | Predecessors | Baseline start | Baseline finish | Baseline duration | Total slack | Resources | Work | Cost | Baseline cost |
| --- | --- | --- | --- | --- | --- | --- | --- | --- | --- | --- | --- | --- | --- | --- |
| 34 | 5 | **Conmissingoning** | 34.5d? | 2025-06-26 | 2025-08-13 |  | 2025-06-26 | 2025-08-13 | 34.5d? | 0d |  | 400h | 3,160 | 3,160 |
| 35 | 5.1 | Resr roof mecgansm | 1w | 2025-06-26 | 2025-07-02 | 33 | 2025-06-26 | 2025-07-02 | 1w | 0d | Supetvisor; Electrician [200%]; Rigger | 120h | 960 | 960 |
| 36 | 5.2 | Test Pa system | 2d | 2025-06-26 | 2025-06-27 | 33 | 2025-06-26 | 2025-06-27 | 2d | 3d | Listen Ear Audio | 16h | 80 | 80 |
| 37 | 5.3 | Test video imaging equiment | 2d | 2025-06-26 | 2025-06-27 | 33 | 2025-06-26 | 2025-06-27 | 2d | 3d | In Forcus Video | 16h | 80 | 80 |
| 38 | 5.4 | Test control room equiment | 5w | 2025-07-03 | 2025-08-06 | 35, 36, 37 | 2025-07-03 | 2025-08-06 | 5w | 0d | In Forcus Video [20%]; Supetvisor; Listen Ear Audio [20%]; Architect; Electrician [200%] | 200h | 1,520 | 1,520 |
| 39 | 5.5 | Obtain offical occcupancy | 1d | 2025-08-07 | 2025-08-07 | 38 | 2025-08-07 | 2025-08-07 | 1d | 0d | Architect; Bulding Clerk; Supetvisor | 24h | 232 | 232 |
| 40 | 5.6 | Obitain safety certification | 2d | 2025-08-08 | 2025-08-11 | 39 | 2025-08-08 | 2025-08-11 | 2d | 0d | Supetvisor | 16h | 192 | 192 |
| 41 | 5.7 | Offical opening | 0.5d | 2025-08-12 | 2025-08-12 | 40 | 2025-08-12 | 2025-08-12 | 0.5d | 0d | Supetvisor [200%] | 8h | 96 | 96 |
| 42 | 5.8 | Commissing Computed | 1d? | 2025-08-12 | 2025-08-13 | 35, 36, 37, 38, 39, 40, 41 | 2025-08-12 | 2025-08-13 | 1d? | 0d |  |  |  |  |
