# bai4_tuan4

Schedule from MS Project, 2023-11-01 to 2024-10-16, costs in $, A marks actual dates.

## Calendars

- Standard: Mon-Fri 08:00-12:00, 13:00-17:00; Sat-Sun off.

## Resources

| Resource | Group | Rate |
| --- | --- | --- |
| Architect | Consultant | 9 |
| Draftsperson | Staff | 7 |
| Building Clerk | Staff | 8 |
| Supervisor | Staff | 12 |
| Rigger | Wages | 5 |
| Boilermaker | Wages | 5 |
| Welder | Wages | 6 |
| Carpenter | Wages | 7 |
| Painter | Wages | 6 |
| Labourer | Wages | 6 |
| Driver | Wages | 8 |
| No Barrier Fencing | Contractor | 3 |
| Rock Solid Concrete | Contractor | 4 |
| Listen Ear Audio | Contractor | 5 |
| In Focus Video | Contractor | 5 |
| Pure Grass Turf | Contractor | 5 |
| Building Inspector | Government | 5 |
| High Jib Crane | Equipment | 7 |
| Grader | Equipment | 6 |
| Air Compressor | Equipment | 7 |
| Utility | Equipment | 5 |
| Electrician | Staff | 7 |
| Plumber | Staff | 5 |
| Astro Turf | Material | 12 |
| Paint | Ute | 20 |

## Schedule

| ID | WBS | Task | Type | Duration | Start | Finish | Predecessors | Complete | Remaining | Total slack | Free slack | Resources | Work | Actual work | Cost | Actual cost |
| --- | --- | --- | --- | --- | --- | --- | --- | --- | --- | --- | --- | --- | --- | --- | --- | --- |
| 1 | 1 | **Planning** |  | 43d | 2023-11-01 A | 2023-12-29 |  | 17% | 35.5d | 5d |  |  | 678h | 195h | 5,400 | 1,500 |
| 2 | 1.1 | Creating architectural plans |  | 3w | 2023-11-01 A | 2023-11-21 |  | 50% | 1.5w | 5d | 0d | Architect; Draftsperson [200%]; Building Clerk [25%] | 390h | 195h | 3,000 | 1,500 |
| 3 | 1.2 | Submit pnlas for approval |  | 1mo | 2023-11-22 | 2023-12-19 | 2 |  |  | 5d | 0d | Architect | 160h |  | 1,440 |  |
| 4 | 1.3 | Order materials |  | 8d | 2023-12-20 | 2023-12-29 | 3 |  |  | 5d | 0d | Draftsperson; Building Clerk | 128h |  | 960 |  |
| 5 | 1.4 | Planning Completed | milestone | 0d | 2023-12-29 | 2023-12-29 | 2, 3, 4 |  |  | 5d | 0d |  |  |  |  |  |
| 6 | 2 | **Site Works** |  | 27d | 2024-01-01 | 2024-02-06 |  |  |  | 5d |  |  | 1056h |  | 8,064 |  |
| 7 | 2.1 | Erect fencing |  | 3d | 2024-01-01 | 2024-01-03 | 5 |  |  | 5d | 0d | No Barrier Fencing | 24h |  | 72 |  |
| 8 | 2.2 | Erect site building |  | 4d | 2024-01-04 | 2024-01-09 | 7 |  |  | 5d | 0d | Carpenter [400%]; Supervisor; Labourer | 192h |  | 1,472 |  |
| 9 | 2.3 | Clear and level site |  | 3w | 2024-01-10 | 2024-01-30 | 8 |  |  | 5d | 0d | Supervisor; Grader [200%]; Driver [200%] | 600h |  | 4,800 |  |
| 10 | 2.4 | Prepare drainage infrastructure |  | 1w | 2024-01-31 | 2024-02-06 | 9 |  |  | 5d | 0d | Supervisor [50%]; Plumber [200%] | 100h |  | 640 |  |
| 11 | 2.5 | Preparecabling infrastructure |  | 1w | 2024-01-31 | 2024-02-06 | 9 |  |  | 5d | 0d | Supervisor [50%]; Electrician [300%] | 140h |  | 1,080 |  |
| 12 | 2.6 | Site Works Completed | milestone | 0d | 2024-02-06 | 2024-02-06 | 7, 8, 9, 10, 11 |  |  | 5d | 0d |  |  |  |  |  |
| 13 | 3 | **Building Construction** |  | 130d? | 2024-02-07 | 2024-08-06 |  |  |  | 5d |  |  | 22952h |  | 140,848 |  |
| 14 | 3.1 | Pour foundations |  | 4d | 2024-02-07 | 2024-02-12 | 12 |  |  | 5d | 0d | Rock Solid Concrete | 32h |  | 128 |  |
| 15 | 3.2 | Erect steelwork |  | 3mo | 2024-02-13 | 2024-05-06 | 14 |  |  | 5d | 0d | Supervisor [50%]; Rigger [600%]; Boilermaker [600%]; Welder [500%]; Labourer [600%]; Driver [200%]; High Jib Crane; Utility | 13200h |  | 76,800 |  |
| 16 | 3.3 | Erect wall |  | 2mo | 2024-05-07 | 2024-07-01 | 15 |  |  | 5d | 0d | Supervisor [50%]; Carpenter [700%]; Labourer [400%]; Driver; Grader; Air Compressor; Electrician [75%]; Plumber [25%] | 4960h |  | 34,080 |  |
| 17 | 3.4 | Install roofing superstructure |  | 2w | 2024-07-02 | 2024-07-15 | 16 |  |  | 5d | 0d | Supervisor [50%]; Rigger [500%]; Boilermaker [500%]; Welder [300%]; Labourer [500%]; Driver [200%]; High Jib Crane; Utility; Air Compressor; Plumber [50%] | 1920h |  | 11,320 |  |
| 18 | 3.5 | Install roofing retracting mechanism |  | 1w | 2024-07-16 | 2024-07-22 | 17 |  |  | 5d | 0d | Supervisor [50%]; Welder; Boilermaker [200%]; Driver; Rigger [200%]; Electrician [200%]; High Jib Crane | 380h |  | 2,440 |  |
| 19 | 3.6 | Erec seating tiers |  | 3w | 2024-07-16 | 2024-08-05 | 18SS |  |  | 5d | 0d | Supervisor [50%]; Carpenter [800%]; Welder [200%]; Boilermaker [200%]; Labourer [500%]; Driver; Utility; Air Compressor | 2460h |  | 16,080 |  |
| 20 | 3.7 | Building Construction Completed |  | 1d? | 2024-08-06 | 2024-08-06 | 14, 15, 16, 17, 18, 19 |  |  | 5d | 0d |  |  |  |  |  |
| 21 | 4 | **Fit Out** |  | 36d? | 2024-08-07 A | 2024-09-25 |  | 12% | 31.81d? | 5d |  |  | 2920h | 240h | 17,800 | 1,680 |
| 22 | 4.1 | Fit all windows and doors |  | 2w | 2024-08-07 | 2024-08-20 | 20 |  |  | 30d | 25d | Carpenter [500%]; Labourer [200%] | 560h |  | 3,760 |  |
| 23 | 4.2 | Install electrical cabling |  | 1w | 2024-08-07 | 2024-08-13 | 20 |  |  | 27d | 0d | Electrician [300%]; Labourer [200%] | 200h |  | 1,320 |  |
| 24 | 4.3 | Install electrical fittings and fixtures |  | 2w | 2024-08-14 A | 2024-08-27 A | 23 | 100% |  |  |  | Electrician [300%] | 240h | 240h | 1,680 | 1,680 |
| 25 | 4.4 | Install all plumbing |  | 2w | 2024-08-07 | 2024-08-20 | 20 |  |  | 25d | 0d | Plumber [200%]; Labourer [200%] | 320h |  | 1,760 |  |
| 26 | 4.5 | Install plumbing fixtures and fittings |  | 1w | 2024-08-21 | 2024-08-27 | 25 |  |  | 25d | 20d | Plumber [200%] | 80h |  | 400 |  |
| 27 | 4.6 | Lay astro turf |  | 1w | 2024-08-07 | 2024-08-13 | 20 |  |  | 35d | 30d | Pure Grass Turf | 40h |  | 200 |  |
| 28 | 4.7 | Erect handrails and fencing |  | 2w | 2024-08-07 | 2024-08-20 | 20 |  |  | 5d | 0d | Welder [400%]; Boilermaker [200%] | 480h |  | 2,720 |  |
| 29 | 4.8 | Paint rooms,fixtures,fittings,etc |  | 1mo | 2024-08-21 | 2024-09-17 | 28 |  |  | 5d | 0d | Painter [500%] | 800h |  | 4,800 |  |
| 30 | 4.9 | Install PA system |  | 2d | 2024-08-14 | 2024-08-15 | 23 |  |  | 28d | 23d | Listen Ear Audio | 16h |  | 80 |  |
| 31 | 4.10 | Install video imaging equipment |  | 3d | 2024-08-14 | 2024-08-16 | 23 |  |  | 27d | 22d | In Focus Video | 24h |  | 120 |  |
| 32 | 4.11 | Fit out control room |  | 1w | 2024-09-18 | 2024-09-24 | 29, 30, 31 |  |  | 5d | 0d | Electrician [200%]; Listen Ear Audio; In Focus Video | 160h |  | 960 |  |
| 33 | 4.12 | Fit out Completed |  | 1d? | 2024-09-25 | 2024-09-25 | 22, 23, 24, 25, 26, 27, 28, 29, 30, 31, 32 |  |  | 5d | 0d |  |  |  |  |  |

| ID | WBS | Task | Type | Duration | Start | Finish | Predecessors | Complete | Remaining | Total slack | Free slack | Resources | Work | Actual work | Cost | Actual cost |
| --- | --- | --- | --- | --- | --- | --- | --- | --- | --- | --- | --- | --- | --- | --- | --- | --- |
| 34 | 5 | **Commissioning** |  | 15d | 2024-09-26 A | 2024-10-16 |  | 5% | 14.21d | 0d |  |  | 432h | 24h | 3,544 | 232 |
| 35 | 5.1 | Test roof mechanism |  | 1w | 2024-09-26 | 2024-10-02 | 33 |  |  | 5d | 0d | Supervisor; Electrician [200%]; Rigger | 160h |  | 1,240 |  |
| 36 | 5.2 | Test PA system |  | 2d | 2024-09-26 | 2024-09-27 | 33 |  |  | 8d | 3d | Listen Ear Audio | 16h |  | 80 |  |
| 37 | 5.3 | Test video imaging equipment |  | 2d | 2024-09-26 | 2024-09-27 | 33 |  |  | 8d | 3d | In Focus Video | 16h |  | 80 |  |
| 38 | 5.4 | Test control room equipment |  | 1w | 2024-10-03 | 2024-10-09 | 35, 36, 37 |  |  | 5d |  | Supervisor; Listen Ear Audio [20%]; In Focus Video [20%]; Architect; Electrician [200%] | 176h |  | 1,480 |  |
| 39 | 5.5 | Obtain official occupancy |  | 1d | 2024-10-10 A | 2024-10-10 A | 38 | 100% |  |  |  | Architect; Building Clerk; Supervisor | 24h | 24h | 232 | 232 |
| 40 | 5.6 | Obtain safety certification |  | 2d | 2024-10-11 | 2024-10-14 | 39 |  |  | 0d |  | Supervisor | 16h |  | 192 |  |
| 41 | 5.7 | Official opening |  | 2d | 2024-10-15 | 2024-10-16 | 40 |  |  | 0d |  | Supervisor; Welder | 24h |  | 240 |  |
| 42 | 5.8 | Commissioning Completed | milestone | 0d | 2024-10-16 | 2024-10-16 | 35, 36, 37, 38, 39, 40, 41 |  |  | 0d |  |  |  |  |  |  |
